# ProyectoPrueba

Schedule from MS Project, 2019-05-03 to 2019-08-02, costs in $, A marks actual dates.

## Calendars

- Estándar: Mon-Fri 09:00-13:00, 15:00-19:00; Sat-Sun off.

## Resources

| Resource | Rate | Cost per use |
| --- | --- | --- |
| Cliente |  |  |
| Líder | 215.27 |  |
| Analista | 162.87 |  |
| Programador | 211.74 |  |
| Encargado de Pruebas | 175.04 |  |
| Administrador | 105.9 |  |
| Diseñador Gráfico | 146.05 |  |
| Documentador | 129.69 |  |
| Diseñador de la Base de Datos | 190.08 |  |
| Laptop HP |  | 250 |
| Laptop Lenovo |  | 104 |
| Laptop Dell |  | 312.5 |
| Laptop HP |  | 208.3 |
| Papelería |  | 300 |
| Ratón HP |  | 7.2 |
| Impresora |  | 72.9 |
| Transporte |  | 80 |
| Comida |  | 200 |
| Electricidad |  | 120 |
| Licencia de project |  | 8.3 |
| Licencia de office |  | 27 |
| Internet |  | 11.6 |
| Licencia de visio |  | 13.5 |

## Schedule

| ID | WBS | Task | Type | Duration | Start | Finish | Predecessors | Complete | Remaining | Total slack | Resources | Work | Actual work | Cost | Actual cost |
| --- | --- | --- | --- | --- | --- | --- | --- | --- | --- | --- | --- | --- | --- | --- | --- |
| 1 | 1 | **Proyecto Aplicación web "Mueblería Casa Morales"** |  | 66d | 2019-05-03 A | 2019-08-02 |  | 71% | 19.13d |  |  | 1680h | 1248h | 289,552.4 | 207,283.18 |
| 2 | 1.1 | **Planificación/Entendimiento del negocio** |  | 11d | 2019-05-03 A | 2019-05-17 |  | 99% | 0d | 0d |  | 192h | 192h | 33,258.68 | 32,605.78 |
| 3 | 1.1.1 | Entendimiento del negocio | manual | 3d | 2019-05-03 A | 2019-05-07 A |  | 100% |  |  | Analista; Líder; Papelería; Transporte; Cliente; Comida | 72h | 72h | 9,655.36 | 9,655.36 |
| 4 | 1.1.2 | Definir el protocolo de entrega con el cliente | manual | 1d | 2019-05-08 A | 2019-05-08 A | 3 | 100% |  |  | Líder; Cliente; Comida; Papelería; Transporte | 16h | 16h | 2,302.16 | 2,302.16 |
| 5 | 1.1.3 | Definir ciclo y actividades con base a la descripción del proyecto | manual | 4d | 2019-05-09 A | 2019-05-14 A | 4 | 100% |  |  | Líder; Laptop HP; Licencia de office; Licencia de project; Papelería; Ratón HP; Internet | 32h | 32h | 7,492.74 | 7,492.74 |
| 6 | 1.1.4 | Determinar tiempo estimado para cada actividad | manual | 3d | 2019-05-10 A | 2019-05-14 A | 5FF | 100% |  |  | Analista; Documentador; Internet; Laptop Dell; Licencia de office; Licencia de project | 48h | 48h | 7,380.84 | 7,380.84 |
| 7 | 1.1.5 | Establecer equipo de trabajo | manual | 1d | 2019-05-15 A | 2019-05-15 A | 5, 6 | 100% |  |  | Líder; Internet; Laptop HP; Licencia de office; Ratón HP; Licencia de project | 8h | 8h | 2,026.26 | 2,026.26 |
| 8 | 1.1.6 | Establecer calendario de actividades | manual | 1d | 2019-05-16 A | 2019-05-16 A | 7 | 100% |  |  | Líder; Internet; Laptop HP; Licencia de office; Licencia de project; Ratón HP | 8h | 8h | 2,026.26 | 2,026.26 |
| 9 | 1.1.7 | Formalizar el inicio de un nuevo ciclo del proyecto | manual | 1d | 2019-05-17 A | 2019-05-17 A | 3, 4, 5, 6, 7, 8 | 100% |  |  | Líder | 8h | 8h | 1,722.16 | 1,722.16 |
| 10 | 1.1.8 | Hito "Firma de inicio de un nuevo proyecto" | milestone, manual | 0d | 2019-05-17 | 2019-05-17 |  |  |  |  | Cliente; Líder; Comida; Transporte; Impresora; Papelería |  |  | 652.9 |  |
| 11 | 1.2 | **Definición de requerimientos** |  | 15d | 2019-05-20 A | 2019-06-07 |  | 99% | 0d |  |  | 336h | 336h | 51,479.26 | 50,477.56 |
| 12 | 1.2.1 | Análisis del problema | manual | 5d | 2019-05-20 A | 2019-05-24 A |  | 100% |  |  | Cliente; Líder; Papelería [200%]; Comida [200%]; Impresora; Transporte | 80h | 80h | 9,263.7 | 9,263.7 |
| 13 | 1.2.2 | Recopilar información | manual | 3d | 2019-05-22 A | 2019-05-24 A | 12FF | 100% |  |  | Líder; Papelería; Comida; Transporte | 24h | 24h | 5,746.48 | 5,746.48 |
| 14 | 1.2.3 | Identificación de requerimientos | manual | 4d | 2019-05-27 A | 2019-05-30 A | 12, 13 | 100% |  |  | Analista; Laptop HP [200%]; Papelería; Licencia de office [200%]; Electricidad [200%]; Internet | 32h | 32h | 5,920.44 | 5,920.44 |
| 15 | 1.2.4 | Identificación de restricciones del sistema a desarrollar | manual | 3d | 2019-05-28 A | 2019-05-30 A | 14FF | 100% |  |  | Administrador; Laptop HP [200%]; Papelería; Licencia de office [200%]; Electricidad [200%]; Internet; Ratón HP | 24h | 24h | 3,257.4 | 3,257.4 |
| 16 | 1.2.5 | Análisis de los requerimientos | manual | 3d | 2019-05-31 A | 2019-06-04 A | 15, 14 | 100% |  |  | Analista; Laptop HP; Licencia de office; Electricidad; Impresora | 24h | 24h | 4,378.78 | 4,378.78 |
| 17 | 1.2.6 | Representación de los requerimientos | manual | 2d | 2019-06-03 A | 2019-06-04 A | 16FF | 100% |  |  | Laptop HP [200%]; Licencia de office [200%]; Electricidad [200%]; Internet; Administrador | 16h | 16h | 2,103 | 2,103 |
| 18 | 1.2.7 | Comunicación de los requerimientos | manual | 1d | 2019-06-05 A | 2019-06-05 A | 17 | 100% |  |  | Administrador; Laptop HP [200%]; Papelería; Licencia de office [200%]; Electricidad [200%]; Internet; Ratón HP | 8h | 8h | 1,563 | 1,563 |
| 19 | 1.2.8 | Validación de requerimientos | manual | 1d | 2019-06-06 A | 2019-06-06 | 18FF | 99% | 0d |  | Líder; Laptop HP [200%]; Licencia de office; Electricidad [200%]; Internet; Ratón HP; Transporte | 8h | 8h | 2,217.96 | 2,137.96 |
| 20 | 1.2.9 | Generación del SRS | manual | 15d | 2019-05-20 A | 2019-06-07 A |  | 100% |  |  | Documentador; Laptop Dell [200%]; Licencia de office; Electricidad [200%]; Impresora; Internet | 120h | 120h | 16,106.8 | 16,106.8 |
| 21 | 1.2.10 | Hito "Firma del SRS" | milestone, manual | 0d | 2019-06-07 | 2019-06-07 |  |  |  |  | Analista; Cliente; Líder; Comida; Impresora; Laptop HP; Papelería; Ratón HP; Transporte; Internet |  |  | 921.7 |  |
| 22 | 1.3 | **Diseño funcional** |  | 7d | 2019-06-10 A | 2019-06-18 |  | 99% | 0d |  |  | 80h | 80h | 17,865.92 | 16,824.22 |
| 23 | 1.3.1 | Definir la estructura del producto | manual | 1d | 2019-06-10 A | 2019-06-10 A |  | 100% |  |  | Diseñador Gráfico; Laptop HP; Licencia de office; Electricidad; Internet | 8h | 8h | 1,577 | 1,577 |
| 24 | 1.3.2 | Definir el funcionamiento del producto | manual | 3d | 2019-06-11 A | 2019-06-13 A | 23FF | 100% |  |  | Diseñador Gráfico; Laptop HP; Licencia de office; Electricidad; Internet | 24h | 24h | 3,913.8 | 3,913.8 |
| 25 | 1.3.3 | Definir las pantallas del producto | manual | 2d | 2019-06-12 A | 2019-06-13 A | 24FF | 100% |  |  | Líder; Laptop HP; Licencia de office; Electricidad; Internet | 16h | 16h | 3,852.92 | 3,852.92 |
| 26 | 1.3.4 | Definir los servicios y funcionalidades | manual | 2d | 2019-06-12 A | 2019-06-13 A | 25FF | 100% |  |  | Líder; Laptop HP; Licencia de office; Electricidad; Internet | 16h | 16h | 3,852.92 | 3,852.92 |
| 27 | 1.3.5 | Generar mapa de navegación | manual | 1d | 2019-06-14 A | 2019-06-14 A | 25, 26 | 100% |  |  | Analista; Laptop HP; Licencia de visio; Electricidad; Internet | 8h | 8h | 1,698.06 | 1,698.06 |
| 28 | 1.3.6 | Crear el prototipo de alto nivel | manual | 1d | 2019-06-14 A | 2019-06-14 A | 27FF | 100% |  |  | Programador; Laptop Lenovo; Electricidad; Internet | 8h | 8h | 1,929.52 | 1,929.52 |
| 29 | 1.3.7 | Hito "Firma de acuerdo con el diseño funcional" | milestone, manual | 0d | 2019-06-14 | 2019-06-14 |  |  |  |  | Analista; Cliente; Comida; Documentador; Electricidad; Impresora; Internet; Laptop HP; Líder; Papelería; Ratón HP; Transporte |  |  | 1,041.7 |  |

| ID | WBS | Task | Type | Duration | Start | Finish | Predecessors | Complete | Remaining | Resources | Work | Actual work | Cost | Actual cost |
| --- | --- | --- | --- | --- | --- | --- | --- | --- | --- | --- | --- | --- | --- | --- |
| 30 | 1.4 | **Diseño técnico** |  | 10d | 2019-06-17 A | 2019-06-28 |  | 45% | 5.52d |  | 256h | 112h | 46,130.3 | 22,039.96 |
| 31 | 1.4.1 | Diseño de diagramas de clases | manual | 3d | 2019-06-17 A | 2019-06-19 |  | 33% | 2d | Programador; Electricidad [200%]; Internet [200%]; Laptop Lenovo [200%]; Licencia de visio [200%] | 24h | 8h | 5,330.86 | 1,943.02 |
| 32 | 1.4.2 | Generar el diagrama E-R | manual | 2d | 2019-06-18 A | 2019-06-19 | 31FF | 50% | 1d | Diseñador de la Base de Datos; Electricidad [200%]; Internet [200%]; Laptop Lenovo [200%]; Licencia de visio [200%] | 16h | 8h | 3,290.38 | 1,769.74 |
| 33 | 1.4.3 | Validar el diagrama E-R | manual | 2d | 2019-06-20 A | 2019-06-21 | 32 | 50% | 1d | Diseñador de la Base de Datos; Electricidad [200%]; Internet [200%]; Laptop Lenovo [200%]; Licencia de visio [200%]; Líder | 32h | 16h | 6,734.7 | 3,491.9 |
| 34 | 1.4.4 | Transformar al diagrama relacional | manual | 1d | 2019-06-21 | 2019-06-21 | 33FF |  |  | Diseñador de la Base de Datos; Electricidad; Internet; Laptop Lenovo; Licencia de visio | 8h |  | 1,769.74 |  |
| 35 | 1.4.5 | Codificar las pantallas | manual | 3d | 2019-06-24 A | 2019-06-26 |  | 67% | 1d | Programador; Electricidad [200%]; Internet [200%]; Laptop Lenovo [200%] | 24h | 16h | 5,317.36 | 3,623.44 |
| 36 | 1.4.6 | Validar entradas de datos | manual | 3d | 2019-06-24 A | 2019-06-26 | 35FF | 67% | 1d | Encargado de Pruebas; Electricidad [200%]; Internet [200%]; Laptop Dell [200%]; Licencia de office [200%]; Licencia de visio [200%] | 24h | 16h | 4,685.56 | 3,285.24 |
| 37 | 1.4.7 | Generar ejemplos de reportes | manual | 2d | 2019-06-25 A | 2019-06-26 | 36FF | 50% | 1d | Documentador; Electricidad [200%]; Impresora [200%]; Internet [200%]; Laptop Dell [200%]; Licencia de office [200%]; Licencia de visio [200%]; Papelería [200%] | 16h | 8h | 2,932.54 | 1,895.02 |
| 38 | 1.4.8 | Validar reportes | manual | 2d | 2019-06-27 | 2019-06-28 | 36, 37 |  |  | Administrador; Electricidad; Internet; Laptop HP; Licencia de office; Ratón HP | 16h |  | 2,110.2 |  |
| 39 | 1.4.9 | Generar documento de especificación de diseño funcional y técnico | manual | 10d | 2019-06-17 A | 2019-06-28 | 38FF | 50% | 5d | Documentador; Electricidad; Impresora; Internet; Laptop Dell; Licencia de office; Papelería | 80h | 40h | 11,219.2 | 6,031.6 |
| 40 | 1.4.10 | Hito "Validación y firma del SDS" | manual | 1d | 2019-06-28 | 2019-06-28 |  |  |  | Cliente; Líder; Comida; Electricidad; Internet; Laptop HP; Licencia de office; Licencia de project; Licencia de visio; Papelería; Ratón HP; Transporte | 16h |  | 2,739.76 |  |
| 41 | 1.5 | **Código** |  | 20d | 2019-07-01 A | 2019-07-26 |  | 52% | 9.52d |  | 200h | 104h | 44,067.16 | 22,454.06 |
| 42 | 1.5.1 | Programar funcionalidades de la base de datos | manual | 4d | 2019-07-01 A | 2019-07-04 |  | 75% | 1d | Diseñador de la Base de Datos; Electricidad [300%]; Internet [300%]; Laptop Lenovo [300%] | 32h | 24h | 6,318.16 | 4,797.52 |
| 43 | 1.5.2 | Programar el módulo 1 | manual | 3d | 2019-07-02 A | 2019-07-04 | 42FF | 67% | 1d | Diseñador de la Base de Datos; Programador; Electricidad [240%]; Internet [240%]; Laptop Lenovo [240%]; Licencia de office [193.3%]; Licencia de visio | 48h | 32h | 9,919.78 | 6,705.22 |
| 44 | 1.5.3 | Pruebas unitarias | manual | 1d | 2019-07-04 | 2019-07-04 |  |  |  | Encargado de Pruebas; Electricidad [200%]; Internet [200%]; Laptop Dell [200%]; Licencia de office [200%]; Licencia de visio [200%] | 8h |  | 1,884.92 |  |
| 45 | 1.5.4 | Programar el módulo 2 | manual | 3d | 2019-07-05 A | 2019-07-09 |  | 67% | 1d | Programador; Electricidad [200%]; Internet [200%]; Laptop Lenovo [200%]; Licencia de office [200%]; Licencia de visio [200%] | 24h | 16h | 5,357.86 | 3,663.94 |
| 46 | 1.5.5 | Pruebas unitarias | manual | 1d | 2019-07-09 | 2019-07-09 | 44FF |  |  | Encargado de Pruebas; Electricidad [200%]; Internet [200%]; Laptop Dell [200%]; Licencia de office [200%]; Licencia de visio [200%] | 8h |  | 1,884.92 |  |
| 47 | 1.5.6 | Programar el módulo 3 | manual | 3d | 2019-07-10 A | 2019-07-12 |  | 67% | 1d | Programador; Electricidad [200%]; Internet [200%]; Laptop Lenovo [200%]; Licencia de visio [200%]; Licencia de office [200%] | 24h | 16h | 5,357.86 | 3,663.94 |
| 48 | 1.5.7 | Pruebas unitarias | manual | 1d | 2019-07-12 | 2019-07-12 | 47FF |  |  | Encargado de Pruebas; Electricidad [200%]; Internet [200%]; Laptop Dell [200%]; Licencia de office [200%]; Licencia de visio [200%] | 8h |  | 1,884.92 |  |
| 49 | 1.5.8 | Programar el módulo 4 | manual | 3d | 2019-07-15 A | 2019-07-17 |  | 67% | 1d | Electricidad; Internet; Laptop Lenovo; Programador | 24h | 16h | 5,317.36 | 3,623.44 |
| 50 | 1.5.9 | Pruebas unitarias | manual | 1d | 2019-07-17 | 2019-07-17 |  |  |  | Electricidad; Encargado de Pruebas; Internet; Laptop Dell | 8h |  | 1,844.42 |  |
| 51 | 1.5.10 | Validación contra diseño y funcionalidad | manual | 1d | 2019-07-18 | 2019-07-18 | 44, 46, 48, 50 |  |  | Diseñador Gráfico; Líder; Electricidad [200%]; Internet [200%]; Laptop HP [200%]; Licencia de office [200%]; Licencia de project [200%]; Licencia de visio [200%]; Ratón HP [200%] | 16h |  | 3,328.16 |  |
| 52 | 1.5.11 | Hito "Validación contra diseño y funcionalidad" | milestone, manual | 0d | 2019-07-18 | 2019-07-18 |  |  |  | Cliente; Comida; Electricidad; Internet; Laptop HP; Líder; Papelería; Ratón HP; Transporte |  |  | 968.8 |  |
| 53 | 1.6 | **Pruebas** |  | 11d | 2019-07-19 | 2019-08-02 |  |  |  |  | 160h |  | 28,862.28 |  |
| 54 | 1.6.1 | Subir módulos a servidor de pruebas | manual | 2d | 2019-07-19 | 2019-07-22 |  |  |  | Administrador; Electricidad [200%]; Internet [200%]; Laptop HP [200%]; Ratón HP [200%] | 16h |  | 2,083.2 |  |
| 55 | 1.6.2 | Pruebas de componentes | manual | 2d | 2019-07-22 | 2019-07-23 | 54FF |  |  | Encargado de Pruebas; Electricidad [200%]; Internet [200%]; Laptop Dell [200%]; Licencia de office [200%] | 16h |  | 3,271.74 |  |
| 56 | 1.6.3 | Pruebas de integración de software | manual | 2d | 2019-07-24 | 2019-07-25 | 54, 55 |  |  | Encargado de Pruebas; Electricidad [200%]; Internet [200%]; Laptop Dell [200%]; Licencia de office [200%] | 16h |  | 3,271.74 |  |
| 57 | 1.6.4 | Pruebas de aceptación | manual | 1d | 2019-07-25 | 2019-07-25 | 55, 56FF |  |  | Encargado de Pruebas; Líder; Electricidad [200%]; Internet [200%]; Laptop Dell [200%]; Laptop HP [200%]; Licencia de office [200%]; Licencia de project [200%]; Licencia de visio [200%]; Ratón HP [200%] | 16h |  | 3,872.58 |  |
| 58 | 1.6.5 | Subir software a sistema a servidor de producción | manual | 1d | 2019-07-26 | 2019-07-26 | 57 |  |  | Administrador; Electricidad; Internet; Laptop HP; Licencia de office; Ratón HP | 8h |  | 1,263 |  |
| 59 | 1.6.6 | Pruebas de estrés | manual | 2d | 2019-07-29 | 2019-07-30 | 58FF |  |  | Cliente; Encargado de Pruebas; Electricidad [200%]; Internet [200%]; Laptop Dell [200%]; Licencia de office [200%] | 32h |  | 3,271.74 |  |
| 60 | 1.6.7 | Pruebas de aceptación | manual | 2d | 2019-07-31 | 2019-08-01 |  |  |  | Líder; Encargado de Pruebas; Electricidad [200%]; Internet [200%]; Laptop Dell [200%]; Laptop HP [200%]; Licencia de office [200%]; Licencia de project [200%]; Licencia de visio [200%]; Ratón HP [200%] | 32h |  | 6,995.06 |  |
| 61 | 1.6.8 | Entrega del producto final | manual | 1d | 2019-08-02 | 2019-08-02 | 60FF |  |  | Analista; Cliente; Comida; Electricidad; Impresora; Internet; Laptop HP; Licencia de office; Licencia de project; Licencia de visio; Líder; Papelería; Ratón HP; Transporte | 24h |  | 4,115.62 |  |
| 62 | 1.6.9 | Hito "Producto final implementado en la empresa" | milestone, manual | 0d | 2019-08-02 | 2019-08-02 |  |  |  | Cliente; Líder; Comida; Electricidad; Internet; Laptop HP; Licencia de office; Licencia de project; Licencia de visio; Ratón HP; Transporte |  |  | 717.6 |  |

| ID | WBS | Task | Type | Duration | Start | Finish | Complete | Remaining | Constraint | Resources | Work | Actual work | Cost | Actual cost |
| --- | --- | --- | --- | --- | --- | --- | --- | --- | --- | --- | --- | --- | --- | --- |
| 63 | 1.7 | **Reunión con clientes** |  | 66d | 2019-05-03 A | 2019-08-02 | 93% | 4.71d |  |  | 456h | 424h | 67,888.8 | 62,881.6 |
| 64 | 1.7.1 | Reunión con clientes 1 | manual | 1d | 2019-05-03 A | 2019-05-03 A | 100% |  | start no earlier than 2019-05-03 | Analista; Cliente; Líder | 24h | 24h | 3,025.12 | 3,025.12 |
| 65 | 1.7.2 | Reunión con clientes 2 | manual | 1d | 2019-05-10 A | 2019-05-10 A | 100% |  | start no earlier than 2019-05-10 | Líder; Analista; Documentador; Administrador | 32h | 32h | 4,909.84 | 4,909.84 |
| 66 | 1.7.3 | Reunión con clientes 3 | manual | 1d | 2019-05-17 A | 2019-05-17 A | 100% |  | start no earlier than 2019-05-17 | Cliente; Líder | 16h | 16h | 1,722.16 | 1,722.16 |
| 67 | 1.7.4 | Reunión con clientes 4 | manual | 1d | 2019-05-24 A | 2019-05-24 A | 100% |  | start no earlier than 2019-05-24 | Cliente; Líder; Administrador; Analista; Documentador; Internet | 40h | 40h | 4,921.44 | 4,921.44 |
| 68 | 1.7.5 | Reunión con clientes 5 | manual | 1d | 2019-05-31 A | 2019-05-31 A | 100% |  | start no earlier than 2019-05-31 | Administrador; Analista; Documentador; Líder; Cliente | 40h | 40h | 4,909.84 | 4,909.84 |
| 69 | 1.7.6 | Reunión con clientes 6 | manual | 1d | 2019-06-07 A | 2019-06-07 A | 100% |  | start no earlier than 2019-06-07 | Analista; Cliente; Líder | 24h | 24h | 3,025.12 | 3,025.12 |
| 70 | 1.7.7 | Reunión con clientes 7 | manual | 1d | 2019-06-14 A | 2019-06-14 A | 100% |  | start no earlier than 2019-06-14 | Administrador; Analista; Diseñador Gráfico; Documentador; Líder | 40h | 40h | 6,078.24 | 6,078.24 |
| 71 | 1.7.8 | Reunión con clientes 8 | manual | 1d | 2019-06-21 A | 2019-06-21 A | 100% |  | start no earlier than 2019-06-21 | Analista; Documentador; Líder; Administrador; Diseñador de la Base de Datos; Diseñador Gráfico; Programador | 56h | 56h | 9,292.8 | 9,292.8 |
| 72 | 1.7.9 | Reunión con clientes 9 | manual | 1d | 2019-06-28 A | 2019-06-28 A | 100% |  | start no earlier than 2019-06-28 | Cliente; Líder | 16h | 16h | 1,722.16 | 1,722.16 |
| 73 | 1.7.10 | Reunión con clientes 10 | manual | 1d | 2019-07-05 A | 2019-07-05 A | 100% |  | start no earlier than 2019-07-05 | Diseñador de la Base de Datos; Encargado de Pruebas; Líder; Programador; Administrador | 40h | 40h | 7,184.24 | 7,184.24 |
| 74 | 1.7.11 | Reunión con clientes 11 | manual | 1d | 2019-07-12 A | 2019-07-12 A | 100% |  | start no earlier than 2019-07-12 | Diseñador de la Base de Datos; Encargado de Pruebas; Líder; Programador; Administrador | 40h | 40h | 7,184.24 | 7,184.24 |
| 75 | 1.7.12 | Reunión con clientes 12 | manual | 1d | 2019-07-19 A | 2019-07-19 A | 100% |  | start no earlier than 2019-07-19 | Líder; Administrador; Diseñador de la Base de Datos; Encargado de Pruebas; Programador | 40h | 40h | 7,184.24 | 7,184.24 |
| 76 | 1.7.13 | Reunión con clientes 13 | manual | 1d | 2019-07-26 A | 2019-07-26 A | 100% |  | start no earlier than 2019-07-26 | Líder; Cliente | 16h | 16h | 1,722.16 | 1,722.16 |
| 77 | 1.7.14 | Reunión con clientes 14 | manual | 1d | 2019-08-02 | 2019-08-02 |  |  | start no earlier than 2019-08-02 | Administrador; Documentador; Encargado de Pruebas; Líder | 32h |  | 5,007.2 |  |
